# b4ubuild_sample_07a

Schedule from MS Project XML, 2008-06-02 to 2008-07-30.
Luxury Custom Home Construction Schedule
B4UBUILD.COM - http://www.b4ubuild.com
This file is a partial schedule for trial use & inspection purposes only. Should you wish to purchase the file that contains the entire schedule, visit: / www.B4UBUILD.COM / You may also send a check or money order in the amount of $20.00 (USD) payable to: / B4UBUILD.COM / 10 Owl Branch Lane / Parkton, MD 21120-9522 / Please include your email address and registered owner contact information in your correspondence so that the full working file and a password, which unlocks it, may be sent to you.

## Calendars

- Standard: Mon-Fri 08:00-12:00, 13:00-17:00; Sat-Sun off.

## Resources

| Resource |
| --- |
| Sales Department |
| Construction Dept. |
| Sales Dept. |
| Client |
| County |
| County Sediment Control Inspector |
| Sediment Control Inspector |
| Department of Permits & Licenses |
| Building Inspector |
| Mason |
| Civil Engineer |
| Concrete Subcontractor |
| Concrete Subcontractor |
| Excavation Subcontractor |
| Masonry Subcontractor |
| Block Masonry Subcontractor |
| Steel Supplier |
| Lumber Supplier |
| Waterproofing Subcontractor |
| Lender |
| Framing Subcontractor |
| Pest Control Subcontractor |
| Mechanical Subcontractor |
| Plumbing Subcontractor |
| Field Superintendent |
| Plumbing Inspector |
| Electrical Subcontractor |
| Alarm Subcontractor |
| Client's Subcontractor |
| Electrical Inspector |
| Roofing Subcontractor |
| Exterior Trim Subcontractor |
| Brick Masonry Subcontractor |
| Insulation Subcontractor |
| BGE Inspector |
| Drywall Subcontractor |
| Painting Subcontractor |
| Trim Supplier |
| Interior Trim Subcontractor |
| Cabinet Subcontractor |
| Deck Subcontractor |
| Driveway Subcontractor |
| Seeding Subcontractor |
| Hardware Subcontractor |
| Mirror Subcontractor |
| Tile Subcontractor |
| Hardwood Floor Subcontractor |
| Carpet Subcontractor |
| Department of Licensing & Permits |
| Paint Subcontractor |
| Window Cleaning Subcontractor |
| Cleaning Subcontractor |
| Superintendent |
| Builder |
| Punch Out Crew |
| Stucco Subcontractor |
| Sales Manager |
| Construction Manager |
| Project Manager |

## Schedule

| ID | WBS | Task | Type | Duration | Start | Finish | Predecessors | Total slack | Free slack | Resources | Work |
| --- | --- | --- | --- | --- | --- | --- | --- | --- | --- | --- | --- |
| 1 | 1 | **Eastern Region** |  | 43d? | 2008-06-02 | 2008-07-30 |  | 0d |  |  | 752h |
| 2 | 1.1 | **Section 1** |  | 43d | 2008-06-02 | 2008-07-30 |  | 0d |  |  | 480h |
| 3 | 4 | **Grading & Building Permits** |  | 17d | 2008-06-02 | 2008-06-24 |  | 0d |  |  | 208h |
| 4 | 4.1 | Schedule lot stake-out |  | 1d | 2008-06-02 | 2008-06-02 |  | 0d |  | Builder | 8h |
| 5 | 4.2 | Stake lot |  | 1d | 2008-06-06 | 2008-06-06 | 4FS+3d | 0d |  | Civil Engineer | 8h |
| 6 | 4.3 | File Grading Permit Application |  | 1d | 2008-06-02 | 2008-06-02 |  | 3d |  | Builder | 8h |
| 7 | 4.4 | File Building Permit Application |  | 3d | 2008-06-02 | 2008-06-04 |  | 2d | 0d | Builder | 24h |
| 8 | 4.5 | Post Lot Identification |  | 1d | 2008-06-09 | 2008-06-09 | 5, 6, 7 | 0d |  | Builder | 8h |
| 9 | 4.6 | Meet Sediment Control Inspector |  | 1d | 2008-06-10 | 2008-06-10 | 6FS+2d, 5, 8 | 0d |  | Builder | 8h |
| 10 | 4.7 | Walk Lot w/ Owner |  | 1d | 2008-06-11 | 2008-06-11 | 9 | 0d |  | Builder | 8h |
| 11 | 4.8 | Install Construction Entrance |  | 1d | 2008-06-12 | 2008-06-12 | 9, 10 | 1d |  | Excavation Subcontractor | 8h |
| 12 | 4.9 | Install Sediment Controls |  | 2d | 2008-06-12 | 2008-06-13 | 9, 10 | 0d |  | Excavation Subcontractor | 16h |
| 13 | 4.10 | Sediment Control Insp. |  | 1d | 2008-06-16 | 2008-06-16 | 11, 12 | 0d |  | Sediment Control Inspector | 8h |
| 14 | 4.11 | Grading Permit Issued |  | 1d | 2008-06-17 | 2008-06-17 | 13 | 0d |  | Sediment Control Inspector | 8h |
| 15 | 4.12 | County Permit Process |  | 10d | 2008-06-05 | 2008-06-18 | 7 | 3d | 0d | Department of Permits & Licenses | 80h |
| 16 | 4.13 | Building Permit Approved |  | 1d | 2008-06-19 | 2008-06-19 | 15, 14 | 3d | 0d | Department of Permits & Licenses | 8h |
| 17 | 4.14 | Pay Permit Fees and Excise Taxes |  | 1d | 2008-06-24 | 2008-06-24 | 16FS+2d | 26d | 0d | Builder | 8h |
| 18 | 4.15 | Building Permit Issued | milestone | 0d | 2008-06-24 | 2008-06-24 | 17 | 26d |  | Department of Permits & Licenses |  |
| 19 | 5 | **Site Work** |  | 7d | 2008-06-18 | 2008-06-26 |  | 0d |  |  | 64h |
| 20 | 5.1 | Clear Lot |  | 3d | 2008-06-18 | 2008-06-20 | 14 | 0d |  | Excavation Subcontractor | 24h |
| 21 | 5.2 | Strip Topsoil & Stockpile |  | 1d | 2008-06-23 | 2008-06-23 | 20 | 27d |  | Excavation Subcontractor | 8h |
| 22 | 5.3 | Stake Lot for Excavation |  | 1d | 2008-06-23 | 2008-06-23 | 20 | 0d |  | Civil Engineer | 8h |
| 23 | 5.4 | Rough grade lot |  | 1d | 2008-06-24 | 2008-06-24 | 20, 22 | 0d |  | Excavation Subcontractor | 8h |
| 24 | 5.5 | Excavate for foundation |  | 2d | 2008-06-25 | 2008-06-26 | 16, 22, 20, 23 | 0d |  | Excavation Subcontractor | 16h |

| ID | WBS | Task | Type | Duration | Start | Finish | Predecessors | Total slack | Free slack | Resources | Work |
| --- | --- | --- | --- | --- | --- | --- | --- | --- | --- | --- | --- |
| 25 | 6 | **Foundation** |  | 24d | 2008-06-27 | 2008-07-30 |  | 0d |  |  | 208h |
| 26 | 6.1 | Layout footings |  | 1d | 2008-06-27 | 2008-06-27 | 24 | 0d |  | Concrete Subcontractor | 8h |
| 27 | 6.2 | Dig Footings & Install Reinforcing |  | 1d | 2008-06-30 | 2008-06-30 | 26 | 0d |  | Concrete Subcontractor | 8h |
| 28 | 6.3 | Footing Inspection | milestone | 0d | 2008-06-30 | 2008-06-30 | 27 | 0d |  | Building Inspector |  |
| 29 | 6.4 | Pour footings |  | 1d | 2008-07-01 | 2008-07-01 | 28 | 0d |  | Concrete Subcontractor | 8h |
| 30 | 6.5 | Pin Footings |  | 1d | 2008-07-02 | 2008-07-02 | 29 | 0d |  | Civil Engineer | 8h |
| 31 | 6.6 | Stock Block, Mortar, Sand |  | 1d | 2008-07-03 | 2008-07-03 | 30 | 0d |  | Block Masonry Subcontractor | 8h |
| 32 | 6.7 | Build Block Foundation |  | 15d | 2008-07-04 | 2008-07-24 | 30, 31 | 0d |  | Block Masonry Subcontractor | 120h |
| 33 | 6.8 | Foundation Certification | milestone | 0d | 2008-07-24 | 2008-07-24 | 32 | 4d | 0d | Civil Engineer |  |
| 34 | 6.9 | Draw #1 (Location Survey) | milestone | 0d | 2008-07-24 | 2008-07-24 | 33 | 4d |  | Lender |  |
| 35 | 6.10 | Fill Block Cores w/ Concrete |  | 1d | 2008-07-25 | 2008-07-25 | 32 | 0d |  | Block Masonry Subcontractor | 8h |
| 36 | 6.11 | Steel Delivery |  | 1d | 2008-07-28 | 2008-07-28 | 35 | 0d |  | Steel Supplier | 8h |
| 37 | 6.12 | Set Lintels, Bolts, Cap Block |  | 2d | 2008-07-29 | 2008-07-30 | 36 | 0d |  | Block Masonry Subcontractor | 16h |
| 38 | 6.13 | Lumber Delivery |  | 1d | 2008-07-28 | 2008-07-28 | 35 | 1d | 0d | Lumber Supplier | 8h |
| 39 | 6.14 | Waterproofing and Drain Tile |  | 1d | 2008-07-29 | 2008-07-29 | 38 | 1d |  | Waterproofing Subcontractor | 8h |
| 40 | 1.2 | **Section 2** |  | 19d? | 2008-06-02 | 2008-06-26 |  | 24d |  |  | 272h |
| 41 | 4 | **Grading & Building Permits** |  | 17d | 2008-06-02 | 2008-06-24 |  | 24d |  |  | 208h |
| 42 | 4.1 | Schedule lot stake-out |  | 1d | 2008-06-02 | 2008-06-02 |  | 24d | 0d | Builder | 8h |
| 43 | 4.2 | Stake lot |  | 1d | 2008-06-06 | 2008-06-06 | 42FS+3d | 24d | 0d | Civil Engineer | 8h |
| 44 | 4.3 | File Grading Permit Application |  | 1d | 2008-06-02 | 2008-06-02 |  | 27d | 3d | Builder | 8h |
| 45 | 4.4 | File Building Permit Application |  | 3d | 2008-06-02 | 2008-06-04 |  | 26d | 0d | Builder | 24h |
| 46 | 4.5 | Post Lot Identification |  | 1d | 2008-06-09 | 2008-06-09 | 43, 44, 45 | 24d | 0d | Builder | 8h |
| 47 | 4.6 | Meet Sediment Control Inspector |  | 1d | 2008-06-10 | 2008-06-10 | 43, 44FS+2d, 46 | 24d | 0d | Builder | 8h |
| 48 | 4.7 | Walk Lot w/ Owner |  | 1d | 2008-06-11 | 2008-06-11 | 47 | 24d | 0d | Builder | 8h |
| 49 | 4.8 | Install Construction Entrance |  | 1d | 2008-06-12 | 2008-06-12 | 47, 48 | 25d | 1d | Excavation Subcontractor | 8h |
| 50 | 4.9 | Install Sediment Controls |  | 2d | 2008-06-12 | 2008-06-13 | 47, 48 | 24d | 0d | Excavation Subcontractor | 16h |
| 51 | 4.10 | Sediment Control Insp. |  | 1d | 2008-06-16 | 2008-06-16 | 49, 50 | 24d | 0d | Sediment Control Inspector | 8h |
| 52 | 4.11 | Grading Permit Issued |  | 1d | 2008-06-17 | 2008-06-17 | 51 | 24d | 0d | Sediment Control Inspector | 8h |
| 53 | 4.12 | County Permit Process |  | 10d | 2008-06-05 | 2008-06-18 | 45 | 26d | 0d | Department of Permits & Licenses | 80h |
| 54 | 4.13 | Building Permit Approved |  | 1d | 2008-06-19 | 2008-06-19 | 52, 53 | 26d | 0d | Department of Permits & Licenses | 8h |
| 55 | 4.14 | Pay Permit Fees and Excise Taxes |  | 1d | 2008-06-24 | 2008-06-24 | 54FS+2d | 26d | 0d | Builder | 8h |
| 56 | 4.15 | Building Permit Issued | milestone | 0d | 2008-06-24 | 2008-06-24 | 55 | 26d |  | Department of Permits & Licenses |  |

| ID | WBS | Task | Duration | Start | Finish | Predecessors | Total slack | Free slack | Resources | Work |
| --- | --- | --- | --- | --- | --- | --- | --- | --- | --- | --- |
| 57 | 5 | **Site Work** | 7d | 2008-06-18 | 2008-06-26 |  | 24d |  |  | 64h |
| 58 | 5.1 | Clear Lot | 3d | 2008-06-18 | 2008-06-20 | 52 | 24d | 0d | Excavation Subcontractor | 24h |
| 59 | 5.2 | Strip Topsoil & Stockpile | 1d | 2008-06-23 | 2008-06-23 | 58 | 27d |  | Excavation Subcontractor | 8h |
| 60 | 5.3 | Stake Lot for Excavation | 1d | 2008-06-23 | 2008-06-23 | 58 | 24d | 0d | Civil Engineer | 8h |
| 61 | 5.4 | Rough grade lot | 1d | 2008-06-24 | 2008-06-24 | 58, 60 | 24d | 0d | Excavation Subcontractor | 8h |
| 62 | 5.5 | Excavate for foundation | 2d | 2008-06-25 | 2008-06-26 | 54, 58, 60, 61 | 24d |  | Excavation Subcontractor | 16h |
